# Management_Project_2

How a schedule from MS Project changed from version to version. A marks actual dates.

## Version 1 (saved 2025-11-20)

Note of the change: added delays

| ID | WBS | Task | Duration | Start | Finish | Predecessors | Total float | Constraint |
| --- | --- | --- | --- | --- | --- | --- | --- | --- |
| 1 | 1 | **Planning and Approvals** | 210d | 2025-10-20 | 2026-08-17 |  | 0d |  |
| 2 |  | Needs Assessment and Feasibility Study | 6w | 2025-10-20 | 2025-12-01 |  | 0d |  |
| 3 |  | Equipment Specification with vendor | 8w | 2025-12-02 | 2026-01-30 | 2 | 0d |  |
| 4 |  | Radiation Safety & RF shielding review | 6w | 2026-02-02 | 2026-03-13 | 3 | 0d |  |
| 5 |  | Hospital Design Control Committee Approval | 2w | 2026-03-16 | 2026-03-27 | 4 | 0d |  |
| 6 |  | Planning & Fire Cert submission | 0d | 2026-03-27 | 2026-03-27 | 5 | 0d |  |
| 7 |  | Approval Received | 20w | 2026-03-30 | 2026-08-17 | 6 | 0d |  |
| 8 | 2 | **Design & Procurement** | 250d | 2026-08-18 | 2027-08-19 |  | 0d |  |
| 9 |  | Detailed architechture & services design | 8w | 2026-08-18 | 2026-10-12 | 7 | 0d |  |
| 10 | 2.2 | **M&E Coordination(HVAC, Electrical, Cooling)** | 50d | 2026-10-13 | 2026-12-22 | 9 | 0d |  |
| 11 |  | M&E Information and Constraints Review | 2w | 2026-10-13 | 2026-10-27 | 9 | 0d |  |
| 12 |  | Develop Initial M&E Layouts | 6w | 2026-10-28 | 2026-12-08 | 11 | 10d |  |
| 13 |  | Clash Resolution, Shutdown Strategy and Final Sign-off | 6w | 2026-11-11 | 2026-12-22 | 11FS+2w | 0d | finish no earlier than 2026-10-13 |
| 14 | 2.3 | **RF Shielding Design & Testing Plan** | 30d | 2026-12-23 | 2027-02-11 | 10 | 0d |  |
| 15 |  | RF Requirements Review and Conceptual Layout | 2w | 2026-12-23 | 2027-01-13 | 10 | 20d |  |
| 16 |  | RF Enclosure Design and Costing | 4w | 2027-01-07 | 2027-02-04 | 10FS+1w | 5d |  |
| 17 |  | RF Procurement, Schedule, and Testing Plan | 4w | 2027-01-14 | 2027-02-11 | 10FS+2w | 0d |  |
| 18 |  | Equipment Procurement (MRI & Ancillaries) | 16w | 2027-02-12 | 2027-06-09 | 14 | 0d |  |
| 19 |  | Tender for Construction Works | 6w | 2027-06-10 | 2027-07-21 | 18 | 0d |  |
| 20 |  | Contractor Mobilisation | 4w | 2027-07-22 | 2027-08-19 | 19 | 0d |  |
| 21 | 3 | **Construction & Isolation** | 280d | 2027-08-20 | 2028-10-02 | 20 | 0d |  |
| 22 |  | Site Set-Up & Isolation Works | 4w | 2027-08-20 | 2027-09-16 |  | 0d |  |
| 23 |  | Demolition & Refurbishment | 8w | 2027-09-17 | 2027-11-12 | 22 | 0d |  |
| 24 |  | M&E Rough-In (Cabling, Piping, HVAC) | 10w | 2027-11-15 | 2028-01-28 | 23 | 0d |  |
| 25 | 3.4 | **RF Shielding Installation** | 40d | 2028-01-31 | 2028-03-28 | 24 | 0d |  |
| 26 |  | MRI Room RF Fit-out | 6w | 2028-01-31 | 2028-03-13 |  | 10d |  |
| 27 |  | Control and Plant Room RF Works | 5w | 2028-01-31 | 2028-03-06 |  | 0d |  |
| 28 |  | Quality Assurance and Initial RF Tests | 3w | 2028-03-07 | 2028-03-28 | 27 | 0d |  |
| 29 |  | Finishes & Fit-Out | 6w | 2028-03-29 | 2028-05-11 | 25 | 0d |  |
| 30 |  | MRI Equipment Delivery & Rigging | 4w | 2028-05-12 | 2028-06-09 | 29 | 0d |  |
| 31 | 3.7 | **MRI Installation & Calibration** | 30d | 2028-06-12 | 2028-07-21 | 30 | 0d |  |
| 32 |  | Plant-room Equipment Installation and Testing | 2w | 2028-06-12 | 2028-06-23 |  | 20d |  |
| 33 |  | MRI Room Magnet and Equipment Installation | 3w | 2028-06-19 | 2028-07-07 | 30FS+1w | 0d |  |
| 34 |  | System Calibration and Safety Testing | 2w | 2028-07-10 | 2028-07-21 | 33 | 0d |  |
| 35 |  | Commissioning & Validation | 6w | 2028-07-24 | 2028-09-04 | 31 | 0d |  |
| 36 |  | Handover & Close-out | 4w | 2028-09-05 | 2028-10-02 | 35 | 0d |  |

## Version 2 (saved 2025-11-29)

Note of the change: feat:

Last finish stays 2028-10-02.

Changed:

| ID | Task | Start | Finish | Duration | Total float | Predecessors | Other |
| --- | --- | --- | --- | --- | --- | --- | --- |
| 13 | Clash Resolution, Shutdown Strategy and Final Sign-off |  |  |  |  | 11FS+2w → 12SS+2w |  |
| 16 | RF Enclosure Design and Costing |  |  |  | 5d → 0d | 10FS+1w → 15SS+1w |  |
| 17 | RF Procurement, Schedule, and Testing Plan |  |  |  |  | 10FS+2w → 16SS+1w |  |
| 22 | Site Set-Up & Isolation Works |  |  |  |  | none → 20 |  |
| 26 | RF Grounding and structure |  | 2028-03-13 → 2028-02-21 (-21d) | 6w → 3w | 10d → 0d | none → 24 | was named MRI Room RF Fit-out |
| 27 | Shielding installation | 2028-01-31 → 2028-02-22 (+22d) | 2028-03-06 → 2028-03-13 (+7d) | 5w → 3w |  | none → 26 | was named Control and Plant Room RF Works |
| 28 | Quality Assurance and Initial RF Tests | 2028-03-07 → 2028-03-14 (+7d) |  | 3w → 2w |  |  |  |
| 32 | Plant-room Equipment Installation and Testing |  |  |  | 20d → 0d | none → 30 |  |
| 33 | MRI Room Magnet and Equipment Installation |  |  |  |  | 30FS+1w → 32SS+1w |  |

## Version 3 (saved 2025-11-30)

Note of the change: More Formatting

Last finish stays 2028-10-02.

Changed:

| ID | Task | Finish | Duration | Total float | Predecessors | Other |
| --- | --- | --- | --- | --- | --- | --- |
| 1 | **Planning and Approvals** | 2026-08-17 → 2026-10-15 (+59d) | 210d → 252.88d | 0d → none |  | constraint none → as late as possible |
| 2 | Needs Assessment and Feasibility Study (22339628, 22335485, 22335987) |  |  | 0d → 42.88d |  | was named Needs Assessment and Feasibility Study |
| 8 | **Design & Procurement** |  |  |  | none → 7 | constraint none → as late as possible |
| 10 | **M&E Coordination(HVAC, Electrical, Cooling)** |  |  |  |  | constraint none → as late as possible |
| 14 | **RF Shielding Design & Testing Plan** |  |  |  |  | constraint none → as late as possible |
| 21 | **Construction & Isolation** |  |  |  |  | constraint none → as late as possible |
| 25 | **RF Shielding Installation** |  |  |  |  | constraint none → as late as possible |
| 31 | **MRI Installation & Calibration** |  |  |  |  | constraint none → as late as possible |
