# Management_Project_2

How a schedule from MS Project changed from version to version. A marks actual dates.

## Version 1 (saved 2025-11-30)

Note of the change: feat:

| ID | WBS | Task | Duration | Start | Finish | Predecessors | Total float | Constraint |
| --- | --- | --- | --- | --- | --- | --- | --- | --- |
| 1 | 1 | **Planning and Approvals** | 210d | 2025-10-20 | 2026-08-17 |  | 0.5d |  |
| 2 |  | Needs Assessment and Feasibility Study | 6w | 2025-10-20 | 2025-12-01 |  | 0.5d |  |
| 3 |  | Equipment Specification with vendor | 8w | 2025-12-02 | 2026-01-30 | 2 | 0.5d |  |
| 4 |  | Radiation Safety & RF shielding review | 6w | 2026-02-02 | 2026-03-13 | 3 | 0.5d |  |
| 5 |  | Hospital Design Control Committee Approval | 2w | 2026-03-16 | 2026-03-27 | 4 | 0.5d |  |
| 6 |  | Planning & Fire Cert submission | 0d | 2026-03-27 | 2026-03-27 | 5 | 0.5d |  |
| 7 |  | Approval Received | 20w | 2026-03-27 | 2026-08-17 | 6 | 0.5d |  |
| 8 | 2 | **Design & Procurement** | 250d | 2026-08-18 | 2027-08-19 |  | 0.5d |  |
| 9 |  | Detailed architechture & services design | 8w | 2026-08-18 | 2026-10-12 | 7 | 0.5d |  |
| 10 | 2.2 | **M&E Coordination(HVAC, Electrical, Cooling)** | 50d | 2026-10-13 | 2026-12-22 | 9 | 0.5d |  |
| 11 |  | M&E Information and Constraints Review | 2w | 2026-10-13 | 2026-10-27 | 9 | 0.5d |  |
| 12 |  | Develop Initial M&E Layouts | 6w | 2026-10-28 | 2026-12-08 | 11 | 0.5d |  |
| 13 |  | Clash Resolution, Shutdown Strategy and Final Sign-off | 6w | 2026-11-11 | 2026-12-22 | 12SS+2w | 0.5d | finish no earlier than 2026-10-13 |
| 14 | 2.3 | **RF Shielding Design & Testing Plan** | 30d | 2026-12-23 | 2027-02-11 | 10 | 0.5d |  |
| 15 |  | RF Requirements Review and Conceptual Layout | 2w | 2026-12-23 | 2027-01-13 | 10 | 0.5d |  |
| 16 |  | RF Enclosure Design and Costing | 4w | 2027-01-07 | 2027-02-04 | 15SS+1w | 0.5d |  |
| 17 |  | RF Procurement, Schedule, and Testing Plan | 4w | 2027-01-14 | 2027-02-11 | 16SS+1w | 0.5d |  |
| 18 |  | Equipment Procurement (MRI & Ancillaries) | 16w | 2027-02-12 | 2027-06-09 | 14 | 0.5d |  |
| 19 |  | Tender for Construction Works | 6w | 2027-06-10 | 2027-07-21 | 18 | 0.5d |  |
| 20 |  | Contractor Mobilisation | 4w | 2027-07-22 | 2027-08-19 | 19 | 0.5d |  |
| 21 | 3 | **Construction & Isolation** | 354.88d | 2027-08-20 | 2029-01-24 | 20 | 0d |  |
| 22 |  | Site Set-Up & Isolation Works | 4w | 2027-08-20 | 2027-09-16 | 20 | 0.5d |  |
| 23 |  | Demolition & Refurbishment | 8w | 2027-09-17 | 2028-01-14 | 22 | 0d |  |
| 24 |  | M&E Rough-In (Cabling, Piping, HVAC) | 10w | 2028-01-14 | 2028-03-28 | 23 | 0d |  |
| 25 | 3.4 | **RF Shielding Installation** | 105d | 2028-03-28 | 2028-08-28 | 24 | 0d |  |
| 26 |  | RF Grounding and structure | 3w | 2028-03-28 | 2028-04-18 | 24 | 90d |  |
| 27 |  | Shielding installation | 3w | 2028-07-21 | 2028-08-14 | 24FS+16w | 0d |  |
| 28 |  | Quality Assurance and Initial RF Tests | 2w | 2028-08-14 | 2028-08-28 | 27 | 0d |  |
| 29 |  | Finishes & Fit-Out | 8w | 2028-03-29 | 2028-07-21 | 24 | 12.5d |  |
| 30 |  | MRI Equipment Delivery & Rigging | 4w | 2028-08-28 | 2028-09-25 | 29, 25 | 0d |  |
| 31 | 3.7 | **MRI Installation & Calibration** | 30d | 2028-09-25 | 2028-11-07 | 30 | 0d |  |
| 32 |  | Plant-room Equipment Installation and Testing | 2w | 2028-09-25 | 2028-10-09 | 30 | 0d |  |
| 33 |  | MRI Room Magnet and Equipment Installation | 3w | 2028-10-02 | 2028-10-23 | 32SS+1w | 0d |  |
| 34 |  | System Calibration and Safety Testing | 2w | 2028-10-23 | 2028-11-07 | 33 | 0d |  |
| 35 |  | Commissioning & Validation | 6w | 2028-11-07 | 2028-12-19 | 31 | 0d |  |
| 36 |  | Handover & Close-out | 4w | 2028-12-19 | 2029-01-24 | 35 | 0d |  |

## Version 2 (saved 2025-11-30)

Note of the change: fix: scenario 2

Last finish stays 2029-01-24.

Changed:

| ID | Task | Finish | Duration | Total float |
| --- | --- | --- | --- | --- |
| 29 | Finishes & Fit-Out | 2028-07-21 → 2028-06-23 (-28d) | 8w → 6w | 12.5d → 22.5d |
| 32 | Plant-room Equipment Installation and Testing | 2028-10-09 → 2028-10-16 (+7d) | 2w → 3w |  |
