# Management_Project_2

How a schedule from MS Project changed from version to version. A marks actual dates.

## Version 1 (saved 2025-11-20)

Note of the change: added delays

| ID | WBS | Task | Duration | Start | Finish | Predecessors | Total float | Constraint |
| --- | --- | --- | --- | --- | --- | --- | --- | --- |
| 1 | 1 | **Planning and Approvals** | 210d | 2025-10-20 | 2026-08-17 |  | 0.5d |  |
| 2 |  | Needs Assessment and Feasibility Study | 6w | 2025-10-20 | 2025-12-01 |  | 0.5d |  |
| 3 |  | Equipment Specification with vendor | 8w | 2025-12-02 | 2026-01-30 | 2 | 0.5d |  |
| 4 |  | Radiation Safety & RF shielding review | 6w | 2026-02-02 | 2026-03-13 | 3 | 0.5d |  |
| 5 |  | Hospital Design Control Committee Approval | 2w | 2026-03-16 | 2026-03-27 | 4 | 0.5d |  |
| 6 |  | Planning & Fire Cert submission | 0d | 2026-03-27 | 2026-03-27 | 5 | 0.5d |  |
| 7 |  | Approval Received | 20w | 2026-03-30 | 2026-08-17 | 6 | 0.5d |  |
| 8 | 2 | **Design & Procurement** | 250d | 2026-08-18 | 2027-08-19 |  | 0.5d |  |
| 9 |  | Detailed architechture & services design | 8w | 2026-08-18 | 2026-10-12 | 7 | 0.5d |  |
| 10 | 2.2 | **M&E Coordination(HVAC, Electrical, Cooling)** | 50d | 2026-10-13 | 2026-12-22 | 9 | 0.5d |  |
| 11 |  | M&E Information and Constraints Review | 2w | 2026-10-13 | 2026-10-27 | 9 | 0.5d |  |
| 12 |  | Develop Initial M&E Layouts | 6w | 2026-10-28 | 2026-12-08 | 11 | 10d |  |
| 13 |  | Clash Resolution, Shutdown Strategy and Final Sign-off | 6w | 2026-11-11 | 2026-12-22 | 11FS+2w | 0.5d | finish no earlier than 2026-10-13 |
| 14 | 2.3 | **RF Shielding Design & Testing Plan** | 30d | 2026-12-23 | 2027-02-11 | 10 | 0.5d |  |
| 15 |  | RF Requirements Review and Conceptual Layout | 2w | 2026-12-23 | 2027-01-13 | 10 | 20d |  |
| 16 |  | RF Enclosure Design and Costing | 4w | 2027-01-07 | 2027-02-04 | 10FS+1w | 5d |  |
| 17 |  | RF Procurement, Schedule, and Testing Plan | 4w | 2027-01-14 | 2027-02-11 | 10FS+2w | 0.5d |  |
| 18 |  | Equipment Procurement (MRI & Ancillaries) | 16w | 2027-02-12 | 2027-06-09 | 14 | 0.5d |  |
| 19 |  | Tender for Construction Works | 6w | 2027-06-10 | 2027-07-21 | 18 | 0.5d |  |
| 20 |  | Contractor Mobilisation | 4w | 2027-07-22 | 2027-08-19 | 19 | 0.5d |  |
| 21 | 3 | **Construction & Isolation** | 429.88d | 2027-08-20 | 2029-05-11 | 20 | 0d |  |
| 22 |  | Site Set-Up & Isolation Works | 4w | 2027-08-20 | 2027-09-16 |  | 0.5d |  |
| 23 |  | Demolition & Refurbishment | 8w | 2027-09-17 | 2028-01-14 | 22 | 0.12d |  |
| 24 |  | M&E Rough-In (Cabling, Piping, HVAC) | 10w | 2028-01-14 | 2028-03-28 | 23 | 0.62d |  |
| 25 | 3.4 | **RF Shielding Installation** | 40d | 2028-07-21 | 2028-09-18 | 24FS+16w | 0.62d |  |
| 26 |  | MRI Room RF Fit-out | 6w | 2028-07-21 | 2028-09-04 |  | 10.62d |  |
| 27 |  | Control and Plant Room RF Works | 5w | 2028-07-21 | 2028-08-28 |  | 0.62d |  |
| 28 |  | Quality Assurance and Initial RF Tests | 3w | 2028-08-28 | 2028-09-18 | 27 | 0.62d |  |
| 29 |  | Finishes & Fit-Out | 6w | 2028-09-19 | 2028-12-12 | 25 | 0d |  |
| 30 |  | MRI Equipment Delivery & Rigging | 4w | 2028-12-12 | 2029-01-17 | 29 | 0d |  |
| 31 | 3.7 | **MRI Installation & Calibration** | 30d | 2029-01-17 | 2029-03-01 | 30 | 0d |  |
| 32 |  | Plant-room Equipment Installation and Testing | 2w | 2029-01-17 | 2029-01-31 |  | 20d |  |
| 33 |  | MRI Room Magnet and Equipment Installation | 3w | 2029-01-24 | 2029-02-15 | 30FS+1w | 0d |  |
| 34 |  | System Calibration and Safety Testing | 2w | 2029-02-15 | 2029-03-01 | 33 | 0d |  |
| 35 |  | Commissioning & Validation | 6w | 2029-03-01 | 2029-04-12 | 31 | 0d |  |
| 36 |  | Handover & Close-out | 4w | 2029-04-12 | 2029-05-11 | 35 | 0d |  |

## Version 2 (saved 2025-11-29)

Note of the change: feat:

Last finish 2029-05-11 → 2029-04-19 (-22d).

Changed:

| ID | Task | Start | Finish | Duration | Total float | Predecessors | Other |
| --- | --- | --- | --- | --- | --- | --- | --- |
| 1 | **Planning and Approvals** |  |  |  |  |  | baseline start none → 2025-10-20; baseline finish none → 2026-08-17 |
| 2 | Needs Assessment and Feasibility Study |  |  |  |  |  | baseline start none → 2025-10-20; baseline finish none → 2025-12-01 |
| 3 | Equipment Specification with vendor |  |  |  |  |  | baseline start none → 2025-12-02; baseline finish none → 2026-01-30 |
| 4 | Radiation Safety & RF shielding review |  |  |  |  |  | baseline start none → 2026-02-02; baseline finish none → 2026-03-13 |
| 5 | Hospital Design Control Committee Approval |  |  |  |  |  | baseline start none → 2026-03-16; baseline finish none → 2026-03-27 |
| 6 | Planning & Fire Cert submission |  |  |  |  |  | baseline start none → 2026-03-27; baseline finish none → 2026-03-27 |
| 7 | Approval Received |  |  |  |  |  | baseline start none → 2026-03-30; baseline finish none → 2026-08-17 |
| 8 | **Design & Procurement** |  |  |  |  | none → 7 | baseline start none → 2026-08-18; baseline finish none → 2027-08-19 |
| 9 | Detailed architechture & services design |  |  |  |  |  | baseline start none → 2026-08-18; baseline finish none → 2026-10-12 |
| 10 | **M&E Coordination(HVAC, Electrical, Cooling)** |  |  |  |  |  | baseline start none → 2026-10-13; baseline finish none → 2026-12-22 |
| 11 | M&E Information and Constraints Review |  |  |  |  |  | baseline start none → 2026-10-13; baseline finish none → 2026-10-27 |
| 12 | Develop Initial M&E Layouts |  |  |  | 10d → 0.5d |  | baseline start none → 2026-10-28; baseline finish none → 2026-12-08 |
| 13 | Clash Resolution, Shutdown Strategy and Final Sign-off |  |  |  |  | 11FS+2w → 12SS+2w | baseline start none → 2026-11-11; baseline finish none → 2026-12-22 |
| 14 | **RF Shielding Design & Testing Plan** |  |  |  |  |  | baseline start none → 2026-12-23; baseline finish none → 2027-02-11 |
| 15 | RF Requirements Review and Conceptual Layout |  |  |  | 20d → 0.5d |  | baseline start none → 2026-12-23; baseline finish none → 2027-01-13 |
| 16 | RF Enclosure Design and Costing |  |  |  | 5d → 0.5d | 10FS+1w → 15SS+1w | baseline start none → 2027-01-07; baseline finish none → 2027-02-04 |
| 17 | RF Procurement, Schedule, and Testing Plan |  |  |  |  | 10FS+2w → 16SS+1w | baseline start none → 2027-01-14; baseline finish none → 2027-02-11 |
| 18 | Equipment Procurement (MRI & Ancillaries) |  |  |  |  |  | baseline start none → 2027-02-12; baseline finish none → 2027-06-09 |
| 19 | Tender for Construction Works |  |  |  |  |  | baseline start none → 2027-06-10; baseline finish none → 2027-07-21 |
| 20 | Contractor Mobilisation |  |  |  |  |  | baseline start none → 2027-07-22; baseline finish none → 2027-08-19 |
| 21 | **Construction & Isolation** |  | 2029-05-11 → 2029-04-19 (-22d) | 429.88d → 414.88d |  |  | baseline start none → 2027-08-20; baseline finish none → 2028-10-02 |
| 22 | Site Set-Up & Isolation Works |  |  |  |  | none → 20 | baseline start none → 2027-08-20; baseline finish none → 2027-09-16 |
| 23 | Demolition & Refurbishment |  |  |  |  |  | baseline start none → 2027-09-17; baseline finish none → 2027-11-12 |
| 24 | M&E Rough-In (Cabling, Piping, HVAC) |  |  |  |  |  | baseline start none → 2027-11-15; baseline finish none → 2028-01-28 |
| 25 | **RF Shielding Installation** | 2028-07-21 → 2028-03-28 (-115d) | 2028-09-18 → 2028-08-28 (-21d) | 40d → 105d |  | 24FS+16w → 24 | baseline start none → 2028-01-31; baseline finish none → 2028-03-28 |
| 26 | RF Grounding and structure | 2028-07-21 → 2028-03-28 (-115d) | 2028-09-04 → 2028-04-18 (-139d) | 6w → 3w | 10.62d → 90.62d | none → 24 | was named MRI Room RF Fit-out; baseline start none → 2028-01-31; baseline finish none → 2028-02-21 |
| 27 | Shielding installation |  | 2028-08-28 → 2028-08-14 (-14d) | 5w → 3w |  | none → 24FS+16w | was named Control and Plant Room RF Works; baseline start none → 2028-02-22; baseline finish none → 2028-03-13 |
| 28 | Quality Assurance and Initial RF Tests | 2028-08-28 → 2028-08-14 (-14d) | 2028-09-18 → 2028-08-28 (-21d) | 3w → 2w |  |  | baseline start none → 2028-03-14; baseline finish none → 2028-03-28 |
| 29 | Finishes & Fit-Out | 2028-09-19 → 2028-08-29 (-21d) | 2028-12-12 → 2028-11-21 (-21d) |  |  |  | baseline start none → 2028-03-29; baseline finish none → 2028-05-11 |
| 30 | MRI Equipment Delivery & Rigging | 2028-12-12 → 2028-11-21 (-21d) | 2029-01-17 → 2028-12-19 (-29d) |  |  |  | baseline start none → 2028-05-12; baseline finish none → 2028-06-09 |
| 31 | **MRI Installation & Calibration** | 2029-01-17 → 2028-12-19 (-29d) | 2029-03-01 → 2029-02-08 (-21d) |  |  |  | baseline start none → 2028-06-12; baseline finish none → 2028-07-21 |
| 32 | Plant-room Equipment Installation and Testing | 2029-01-17 → 2028-12-19 (-29d) | 2029-01-31 → 2029-01-10 (-21d) |  | 20d → 0d | none → 30 | baseline start none → 2028-06-12; baseline finish none → 2028-06-23 |
| 33 | MRI Room Magnet and Equipment Installation | 2029-01-24 → 2029-01-03 (-21d) | 2029-02-15 → 2029-01-24 (-22d) |  |  | 30FS+1w → 32SS+1w | baseline start none → 2028-06-19; baseline finish none → 2028-07-07 |
| 34 | System Calibration and Safety Testing | 2029-02-15 → 2029-01-24 (-22d) | 2029-03-01 → 2029-02-08 (-21d) |  |  |  | baseline start none → 2028-07-10; baseline finish none → 2028-07-21 |
| 35 | Commissioning & Validation | 2029-03-01 → 2029-02-08 (-21d) | 2029-04-12 → 2029-03-22 (-21d) |  |  |  | baseline start none → 2028-07-24; baseline finish none → 2028-09-04 |
| 36 | Handover & Close-out | 2029-04-12 → 2029-03-22 (-21d) | 2029-05-11 → 2029-04-19 (-22d) |  |  |  | baseline start none → 2028-09-05; baseline finish none → 2028-10-02 |

## Version 3 (saved 2025-11-30)

Last finish stays 2029-04-19.

Changed:

| ID | Task | Other |
| --- | --- | --- |
| 2 | Needs Assessment and Feasibility Study (22339628, 22335485, 22335987) | was named Needs Assessment and Feasibility Study |
